# Lịch xuất bản sách thiếu nhi

Schedule from MS Project, 2015-04-06 to 2015-11-26, status date 2015-04-08, costs in $, A marks actual dates.
Lucerne Publishing

## Calendars

- Standard: Mon-Fri 08:00-12:00, 13:00-17:00; Sat-Sun off.
- Monday-Wednesday: Mon-Wed 08:00-12:00, 13:00-17:00; Thu-Sun off.

## Resources

| Resource | Group | Unit | Rate |
| --- | --- | --- | --- |
| Cẩm Lan | Editorial |  | 52.5 |
| Biên tập viên ngôn ngữ | Editorial |  | 45 |
| Đan Dũng | Design |  | 75.5 |
| Hạnh Mơ | Editorial |  | 38.75 |
| Ngọc Đào | Editorial |  | 63.25 |
| Tuấn Cao | Editorial |  | 42 |
| Lưu Tùng | Design |  | 70 |
| Dịch vụ in ấn | Production |  |  |
| Đi lại | Other |  |  |
| Thái Đạt | Other |  |  |
| Dịch vụ thiết lập màu in | Production |  |  |
| Bản in thử đóng gáy | Production | copies | 15 |

## Schedule

| ID | WBS | Task | Type | Duration | Start | Finish | Predecessors | Complete | Remaining | Baseline start | Baseline finish | Baseline duration | Total slack | Free slack | Constraint | Deadline | Resources | Work | Actual work | Cost | Baseline cost | Actual cost | Editorial Focus |
| --- | --- | --- | --- | --- | --- | --- | --- | --- | --- | --- | --- | --- | --- | --- | --- | --- | --- | --- | --- | --- | --- | --- | --- |
| 1 | 1 | **Họp ban biên tập** |  | 60.12d | 2015-04-13 08:00 A | 2015-07-06 09:00 |  | 15% | 50.88d | 2015-04-13 08:00 | 2015-07-06 09:00 | 60.12d | 103.88d |  |  |  |  | 45.5h | 7h | 2,223 | 2,223 | 342 |  |
| 2 | 1.1 | Họp ban biên tập 1 |  | 1h | 2015-04-13 08:00 A | 2015-04-13 09:00 A |  | 100% |  | 2015-04-13 08:00 | 2015-04-13 09:00 | 1h |  |  | start no earlier than 2015-04-13 08:00 |  | Cẩm Lan; Tuấn Cao; Hạnh Mơ; Đan Dũng [50%] | 3.5h | 3.5h | 171 | 171 | 171 |  |
| 3 | 1.2 | Họp ban biên tập 2 |  | 1h | 2015-04-20 08:00 A | 2015-04-20 09:00 A |  | 100% |  | 2015-04-20 08:00 | 2015-04-20 09:00 | 1h |  |  | start no earlier than 2015-04-20 08:00 |  | Cẩm Lan; Tuấn Cao; Hạnh Mơ; Đan Dũng [50%] | 3.5h | 3.5h | 171 | 171 | 171 |  |
| 4 | 1.3 | Họp ban biên tập 3 |  | 1h | 2015-04-27 08:00 | 2015-04-27 09:00 |  |  |  | 2015-04-27 08:00 | 2015-04-27 09:00 | 1h | 153.88d |  | start no earlier than 2015-04-27 08:00 |  | Cẩm Lan; Tuấn Cao; Hạnh Mơ; Đan Dũng [50%] | 3.5h |  | 171 | 171 |  |  |
| 5 | 1.4 | Họp ban biên tập 4 |  | 1h | 2015-05-04 08:00 | 2015-05-04 09:00 |  |  |  | 2015-05-04 08:00 | 2015-05-04 09:00 | 1h | 148.88d |  | start no earlier than 2015-05-04 08:00 |  | Cẩm Lan; Tuấn Cao; Hạnh Mơ; Đan Dũng [50%] | 3.5h |  | 171 | 171 |  |  |
| 6 | 1.5 | Họp ban biên tập 5 |  | 1h | 2015-05-11 08:00 | 2015-05-11 09:00 |  |  |  | 2015-05-11 08:00 | 2015-05-11 09:00 | 1h | 143.88d |  | start no earlier than 2015-05-11 08:00 |  | Cẩm Lan; Tuấn Cao; Hạnh Mơ; Đan Dũng [50%] | 3.5h |  | 171 | 171 |  |  |
| 7 | 1.6 | Họp ban biên tập 6 |  | 1h | 2015-05-18 08:00 | 2015-05-18 09:00 |  |  |  | 2015-05-18 08:00 | 2015-05-18 09:00 | 1h | 138.88d |  | start no earlier than 2015-05-18 08:00 |  | Cẩm Lan; Tuấn Cao; Hạnh Mơ; Đan Dũng [50%] | 3.5h |  | 171 | 171 |  |  |
| 8 | 1.7 | Họp ban biên tập 7 |  | 1h | 2015-05-25 08:00 | 2015-05-25 09:00 |  |  |  | 2015-05-25 08:00 | 2015-05-25 09:00 | 1h | 133.88d |  | start no earlier than 2015-05-25 08:00 |  | Cẩm Lan; Tuấn Cao; Hạnh Mơ; Đan Dũng [50%] | 3.5h |  | 171 | 171 |  |  |
| 9 | 1.8 | Họp ban biên tập 8 |  | 1h | 2015-06-01 08:00 | 2015-06-01 09:00 |  |  |  | 2015-06-01 08:00 | 2015-06-01 09:00 | 1h | 128.88d |  | start no earlier than 2015-06-01 08:00 |  | Cẩm Lan; Tuấn Cao; Hạnh Mơ; Đan Dũng [50%] | 3.5h |  | 171 | 171 |  |  |
| 10 | 1.9 | Họp ban biên tập 9 |  | 1h | 2015-06-08 08:00 | 2015-06-08 09:00 |  |  |  | 2015-06-08 08:00 | 2015-06-08 09:00 | 1h | 123.88d |  | start no earlier than 2015-06-08 08:00 |  | Cẩm Lan; Tuấn Cao; Hạnh Mơ; Đan Dũng [50%] | 3.5h |  | 171 | 171 |  |  |
| 11 | 1.10 | Họp ban biên tập 10 |  | 1h | 2015-06-15 08:00 | 2015-06-15 09:00 |  |  |  | 2015-06-15 08:00 | 2015-06-15 09:00 | 1h | 118.88d |  | start no earlier than 2015-06-15 08:00 |  | Cẩm Lan; Tuấn Cao; Hạnh Mơ; Đan Dũng [50%] | 3.5h |  | 171 | 171 |  |  |
| 12 | 1.11 | Họp ban biên tập 11 |  | 1h | 2015-06-22 08:00 | 2015-06-22 09:00 |  |  |  | 2015-06-22 08:00 | 2015-06-22 09:00 | 1h | 113.88d |  | start no earlier than 2015-06-22 08:00 |  | Cẩm Lan; Tuấn Cao; Hạnh Mơ; Đan Dũng [50%] | 3.5h |  | 171 | 171 |  |  |
| 13 | 1.12 | Họp ban biên tập 12 |  | 1h | 2015-06-29 08:00 | 2015-06-29 09:00 |  |  |  | 2015-06-29 08:00 | 2015-06-29 09:00 | 1h | 108.88d |  | start no earlier than 2015-06-29 08:00 |  | Cẩm Lan; Tuấn Cao; Hạnh Mơ; Đan Dũng [50%] | 3.5h |  | 171 | 171 |  |  |
| 14 | 1.13 | Họp ban biên tập 13 |  | 1h | 2015-07-06 08:00 | 2015-07-06 09:00 |  |  |  | 2015-07-06 08:00 | 2015-07-06 09:00 | 1h | 103.88d |  | start no earlier than 2015-07-06 08:00 |  | Cẩm Lan; Tuấn Cao; Hạnh Mơ; Đan Dũng [50%] | 3.5h |  | 171 | 171 |  |  |
| 15 | 2 | **Tiếp nhận bản thảo** |  | 36.75d | 2015-04-06 08:00 A | 2015-05-26 15:00 |  | 54% | 16.94d | 2015-04-06 08:00 | 2015-05-25 12:00 | 35.5d | 2.38d | 0d |  |  |  | 454h | 212h | 18,651.5 | 18,264 | 10,600 |  |
| 16 | 2.1 | Bản thảo đã được nhận | milestone | 0d | 2015-04-06 08:00 A | 2015-04-06 08:00 A |  | 100% |  | 2015-04-06 08:00 | 2015-04-06 08:00 | 0d |  |  |  |  |  |  |  |  |  |  |  |
| 17 | 2.2 | Biên tập nội dung |  | 15d | 2015-04-06 08:00 A | 2015-04-30 10:00 A | 16 | 100% |  | 2015-04-06 08:00 | 2015-04-30 10:00 | 15d |  |  |  |  | Cẩm Lan | 120h | 120h | 6,300 | 6,300 | 6,300 | Full developmental edit |
| 18 | 2.3 | Duyệt tranh minh họa gốc |  | 11.5d | 2015-04-23 10:00 A | 2015-05-08 15:00 | 17FS-5d | 50% | 5.75d | 2015-04-23 10:00 | 2015-05-07 12:00 | 10.25d | 2.38d | 0d |  |  | Hạnh Mơ; Ngọc Đào | 174h | 92h | 8,751.5 | 8,364 | 4,300 |  |
| 19 | 2.4 | Tác giả duyệt phần biên tập nội dung |  | 12d | 2015-05-08 15:00 | 2015-05-26 15:00 | 17, 18 |  |  | 2015-05-07 13:00 | 2015-05-25 12:00 | 12d | 2.38d | 0d |  |  | Thái Đạt; Biên tập viên ngôn ngữ | 160h |  | 3,600 | 3,600 |  | Incorp must-fix issues |
| 20 | 2.5 | Bàn giao cho Ban biên tập | milestone | 0d | 2015-05-26 15:00 | 2015-05-26 15:00 | 19 |  |  | 2015-05-25 12:00 | 2015-05-25 12:00 | 0d | 2.38d |  |  | 2015-05-29 17:00 | Cẩm Lan |  |  |  |  |  |  |
| 21 | 3 | **Biên tập** |  | 29.12d | 2015-05-26 15:00 | 2015-07-06 16:00 | 15 |  |  | 2015-05-25 13:00 | 2015-07-03 14:00 | 29.12d | 2.38d | 0d |  |  |  | 414h |  | 16,339.36 | 15,670 |  |  |
| 22 | 3.1 | Sắp xếp bản thảo để biên tập ngôn ngữ |  | 5.12d | 2015-05-26 15:00 | 2015-06-02 16:00 |  |  |  | 2015-05-25 13:00 | 2015-06-01 14:00 | 5.12d | 2.38d | 0d |  |  | Hạnh Mơ; Đan Dũng [50%] | 66h |  | 3,369.36 | 3,060 |  | Address outstanding line edit issues |
| 23 | 3.2 | Biên tập ngôn ngữ (Copyedit) |  | 11.25d | 2015-06-02 16:00 | 2015-06-18 09:00 | 22 |  |  | 2015-06-01 14:00 | 2015-06-16 16:00 | 11.25d | 2.38d | 0d |  |  | Biên tập viên ngôn ngữ [200%] | 188h |  | 8,460 | 8,100 |  | Style Guide compliance |
| 24 | 3.3 | Tác giả duyệt bản biên tập ngôn ngữ |  | 10d | 2015-06-18 09:00 | 2015-07-02 09:00 | 23 |  |  | 2015-06-16 16:00 | 2015-06-30 16:00 | 10d | 2.38d | 0d |  |  | Thái Đạt; Biên tập viên ngôn ngữ [25%] | 100h |  | 900 | 900 |  | Incorp must-fix issues |
| 25 | 3.4 | Tích hợp chỉnh sửa từ biên tập ngôn ngữ |  | 5.12d | 2015-06-29 14:00 | 2015-07-06 16:00 | 24FS-2.5% |  |  | 2015-06-26 11:00 | 2015-07-03 14:00 | 5.12d | 2.38d | 0d |  |  | Cẩm Lan; Đan Dũng [50%] | 60h |  | 3,610 | 3,610 |  | Incorp must-fix issues |
| 26 | 3.5 | Bàn giao cho bộ phận Sản xuất | milestone | 0d | 2015-07-06 16:00 | 2015-07-06 16:00 | 25 |  |  | 2015-07-03 14:00 | 2015-07-03 14:00 | 0d | 2.38d |  |  |  | Hạnh Mơ |  |  |  |  |  |  |

| ID | WBS | Task | Type | Duration | Start | Finish | Predecessors | Baseline start | Baseline finish | Baseline duration | Total slack | Free slack | Constraint | Calendar | Resources | Work | Cost | Baseline cost |
| --- | --- | --- | --- | --- | --- | --- | --- | --- | --- | --- | --- | --- | --- | --- | --- | --- | --- | --- |
| 27 | 4 | **Thiết kế và sản xuất** |  | 58.12d | 2015-07-06 16:00 | 2015-09-24 17:00 | 21 | 2015-07-03 14:00 | 2015-09-23 16:00 | 58.25d | 1d |  |  |  |  | 888h | 46,679 | 46,679 |
| 28 | 4.1 | Dàn trang |  | 15d | 2015-07-06 16:00 | 2015-07-27 16:00 |  | 2015-07-03 14:00 | 2015-07-24 14:00 | 15d | 2.38d | 0d |  |  | Ngọc Đào | 120h | 7,590 | 7,590 |
| 29 | 4.2 | Thiết kế minh họa bên trong |  | 15.25d | 2015-07-06 16:00 | 2015-07-28 09:00 | 28SS | 2015-07-03 14:00 | 2015-07-24 16:00 | 15.25d | 2.38d | 0d |  |  | Lưu Tùng; Hạnh Mơ | 240h | 13,050 | 13,050 |
| 30 | 4.3 | **Duyệt bản in thử lần 1** |  | 30d | 2015-07-28 09:00 | 2015-09-08 09:00 | 29 | 2015-07-24 16:00 | 2015-09-04 16:00 | 30d | 2.38d | 0d |  |  |  | 320h | 13,860 | 13,860 |
| 31 | 4.3.1 | Soát lỗi và lập chỉ mục |  | 10d | 2015-07-28 09:00 | 2015-08-11 09:00 |  | 2015-07-24 16:00 | 2015-08-07 16:00 | 10d | 2.38d | 0d | start no earlier than 2015-07-17 08:00 |  | Thái Đạt; Biên tập viên ngôn ngữ | 100h | 900 | 900 |
| 32 | 4.3.2 | Tích hợp góp ý từ bản in thử lần 1 |  | 10d | 2015-08-11 09:00 | 2015-08-25 09:00 | 31 | 2015-08-07 16:00 | 2015-08-21 16:00 | 10d | 2.38d | 0d |  |  | Hạnh Mơ; Đan Dũng [50%] | 120h | 6,120 | 6,120 |
| 33 | 4.3.3 | Gửi các trang đã soát lỗi cho bộ phận Sản xuất | milestone | 0d | 2015-08-25 09:00 | 2015-08-25 09:00 | 32 | 2015-08-21 16:00 | 2015-08-21 16:00 | 0d | 2.38d | 0d |  |  | Hạnh Mơ |  |  |  |
| 34 | 4.3.4 | Nhập chỉnh sửa trang và chỉ mục |  | 5d | 2015-08-25 09:00 | 2015-09-01 09:00 | 33 | 2015-08-21 16:00 | 2015-08-28 16:00 | 5d | 2.38d | 0d |  |  | Ngọc Đào; Đan Dũng [50%] | 60h | 4,040 | 4,040 |
| 35 | 4.3.5 | Thiết kế bìa |  | 5d | 2015-09-01 09:00 | 2015-09-08 09:00 | 34 | 2015-08-28 16:00 | 2015-09-04 16:00 | 5d | 2.38d | 0d |  |  | Lưu Tùng | 40h | 2,800 | 2,800 |
| 36 | 4.4 | **Duyệt bản in thử lần 2** |  | 12.88d | 2015-09-08 09:00 | 2015-09-24 17:00 |  | 2015-09-04 16:00 | 2015-09-23 16:00 | 13d | 1d |  |  |  |  | 120h | 6,345 | 6,345 |
| 37 | 4.4.1 | In thử và duyệt |  | 6.5d | 2015-09-08 09:00 | 2015-09-16 14:00 | 35 | 2015-09-04 16:00 | 2015-09-15 11:00 | 6.5d | 2.38d | 0d |  |  | Hạnh Mơ | 40h | 1,800 | 1,800 |
| 38 | 4.4.2 | Gửi các trang đã soát lỗi cho bộ phận Sản xuất | milestone | 0d | 2015-09-16 14:00 | 2015-09-16 14:00 | 37 | 2015-09-15 11:00 | 2015-09-15 11:00 | 0d | 2.38d | 0.38d |  |  | Hạnh Mơ |  |  |  |
| 39 | 4.4.3 | Duyệt cuối cùng |  | 5d | 2015-09-18 08:00 | 2015-09-24 17:00 | 38 | 2015-09-16 16:00 | 2015-09-23 16:00 | 5d | 1d |  |  |  | Ngọc Đào; Hạnh Mơ [50%]; Cẩm Lan [50%]; Bản in thử đóng gáy [20 copies] | 80h | 4,545 | 4,545 |
| 40 | 4.5 | **Thiết kế website đi kèm cuốn sách** |  | 10d | 2015-09-08 09:00 | 2015-09-22 09:00 | 30 | 2015-09-04 16:00 | 2015-09-18 16:00 | 10d | 3.88d |  |  |  |  | 88h | 5,834 | 5,834 |
| 41 | 4.5.1 | Tạo bản mẫu (mockup) |  | 4.5d | 2015-09-08 09:00 | 2015-09-18 09:00 |  | 2015-09-04 16:00 | 2015-09-16 16:00 | 4.5d | 3.88d | 0d |  |  | Lưu Tùng; Hạnh Mơ | 48h | 2,610 | 2,610 |
| 42 | 4.5.2 | Duyệt cùng tác giả |  | 2d | 2015-09-18 09:00 | 2015-09-22 09:00 | 41 | 2015-09-16 16:00 | 2015-09-18 16:00 | 2d | 3.88d |  |  |  | Lưu Tùng; Thái Đạt; Đi lại [0.1%]; Đan Dũng [50%] | 40h | 3,224 | 3,224 |
| 43 | 5 | **Chuẩn bị màu và in ấn** |  | 44d | 2015-09-28 08:00 | 2015-11-26 17:00 | 40 | 2015-09-23 16:00 | 2015-11-26 16:00 | 46d | 0d |  |  |  |  | 328h | 5,310 | 5,310 |
| 44 | 5.1 | Gửi đến xưởng xử lý màu |  | 1d | 2015-09-28 08:00 | 2015-09-28 17:00 | 36 | 2015-09-23 16:00 | 2015-09-28 16:00 | 1d | 0d |  |  | Monday-Wednesday | Hạnh Mơ | 8h | 310 | 310 |
| 45 | 5.2 | Tạo bản in thử |  | 10d | 2015-09-29 08:00 | 2015-10-12 17:00 | 44 | 2015-09-28 16:00 | 2015-10-12 16:00 | 10d | 0d |  |  |  | Dịch vụ thiết lập màu in | 80h | 5,000 | 5,000 |
| 46 | 5.3 | In và vận chuyển |  | 30d | 2015-10-16 08:00 | 2015-11-26 17:00 | 45FS+3d | 2015-10-15 16:00 | 2015-11-26 16:00 | 30d | 0d |  |  |  | Dịch vụ in ấn | 240h |  |  |
| 47 | 6 | **Chuẩn bị ra mắt sách** |  | 22d | 2015-09-29 08:00 | 2015-10-28 17:00 |  | 2015-09-28 16:00 | 2015-10-28 16:00 | 22d | 21d |  |  |  |  | 212h | 9,442 | 9,442 |
| 48 | 6.1 | Lập kế hoạch ra mắt |  | 5d | 2015-09-29 08:00 | 2015-10-05 17:00 | 44 | 2015-09-28 16:00 | 2015-10-05 16:00 | 5d | 21d | 0d |  |  | Cẩm Lan [50%]; Ngọc Đào | 36h | 2,062 | 2,062 |
| 49 | 6.2 | Phân công thành viên nhóm ra mắt |  | 1d | 2015-10-06 08:00 | 2015-10-06 17:00 | 48 | 2015-10-05 16:00 | 2015-10-06 16:00 | 1d | 21d | 0d |  |  | Cẩm Lan | 8h | 420 | 420 |
| 50 | 6.3 | Hoàn thành bảng câu hỏi cho tác giả |  | 5d | 2015-10-07 08:00 | 2015-10-13 17:00 | 49 | 2015-10-06 16:00 | 2015-10-13 16:00 | 5d | 21d | 0d |  |  | Hạnh Mơ; Thái Đạt; Đi lại [0.1%] | 80h | 3,550 | 3,550 |
| 51 | 6.4 | Lên lịch phỏng vấn tác giả |  | 1d | 2015-10-14 08:00 | 2015-10-14 17:00 | 50 | 2015-10-13 16:00 | 2015-10-14 16:00 | 1d | 21d | 0d |  |  | Hạnh Mơ | 8h | 310 | 310 |
| 52 | 6.5 | Thiết kế và đặt in tài liệu marketing |  | 10d | 2015-10-15 08:00 | 2015-10-28 17:00 | 51 | 2015-10-14 16:00 | 2015-10-28 16:00 | 10d | 21d |  |  |  | Hạnh Mơ | 80h | 3,100 | 3,100 |
