# lab1_2

Schedule from MS Project, 2025-08-25 to 2025-09-23, A marks actual dates.

## Calendars

- Standard: Mon 07:00-11:00, 13:00-17:00; Tue-Sat 08:00-12:00, 13:00-17:00; Sun off.

## Resources

| Resource |
| --- |
| PM |
| PM; BA |
| BA |
| UX; UI |
| TechLead |
| DevOps |
| FE Dev |
| BE Dev |
| FE Dev; BE Dev |
| DBA |
| Tester |
| DevOps; PM |

## Schedule

| ID | Task | Type | Duration | Start | Finish | Predecessors | Complete | Remaining | Total slack | Free slack | Resources | Work | Actual work |
| --- | --- | --- | --- | --- | --- | --- | --- | --- | --- | --- | --- | --- | --- |
| 1 | Khởi động dự án | manual | 1d | 2025-08-25 A | 2025-08-26 |  | 66% | 0.34d |  |  | PM | 9h | 6h |
| 2 | Thu thập yêu cầu | manual | 2d | 2025-08-29 A | 2025-08-30 | 1 | 25% | 1.5d |  |  | PM; BA | 16h | 4h |
| 3 | Phân tích & đặc tả |  | 2d | 2025-08-30 A | 2025-09-01 A | 2 | 100% |  |  |  | BA | 16h | 16h |
| 4 | Thiết kế UI wireframe |  | 3d | 2025-09-03 A | 2025-09-05 A | 3 | 100% |  |  |  | UX; UI | 24h | 24h |
| 5 | Thiết kế kiến trúc FE/BE |  | 2d | 2025-09-02 | 2025-09-03 | 3 |  |  | 1d | 0d | TechLead | 16h |  |
| 6 | Chuẩn bị môi trường dev |  | 1d | 2025-09-04 | 2025-09-04 | 5 |  |  | 1d | 0d | DevOps | 8h |  |
| 7 | Frontend: layout cơ bản |  | 3d | 2025-09-06 | 2025-09-09 | 4, 6 |  |  | 0d |  | FE Dev | 24h |  |
| 8 | Frontend: trang sản phẩm |  | 3d | 2025-09-10 | 2025-09-12 | 7 |  |  | 0d |  | FE Dev | 24h |  |
| 9 | Backend: API sản phẩm |  | 4d | 2025-09-05 | 2025-09-09 | 5, 6 |  |  | 3d |  | BE Dev | 32h |  |
| 10 | Kết nối FE với API |  | 2d | 2025-09-13 | 2025-09-15 | 9, 8 |  |  | 0d |  | FE Dev; BE Dev | 16h |  |
| 11 | CSDL: thiết kế & seed data |  | 2d | 2025-09-04 | 2025-09-05 | 5 |  |  | 8d |  | DBA | 16h |  |
| 12 | Viết test case cơ bản |  | 2d | 2025-09-06 | 2025-09-08 | 3, 4, 5 |  |  | 6d |  | Tester | 16h |  |
| 13 | Kiểm thử chức năng |  | 3d | 2025-09-16 | 2025-09-18 | 12, 10, 11 |  |  | 0d |  | Tester | 24h |  |
| 14 | Sửa lỗi & tinh chỉnh |  | 3d | 2025-09-19 | 2025-09-22 | 13 |  |  | 0d |  | FE Dev; BE Dev | 24h |  |
| 15 | Triển khai bản demo |  | 1d | 2025-09-23 | 2025-09-23 | 14 |  |  | 0d |  | DevOps; PM | 8h |  |
